# Punto 1 Asignación

How a schedule from MS Project changed from version to version. A marks actual dates.

## Version 1 (saved 2020-12-04, file Proyecto 1.mpp)

Note of the change: Reestructuración de Cuarto

| ID | WBS | Task | Duration | Start | Finish | Predecessors | Total float |
| --- | --- | --- | --- | --- | --- | --- | --- |
| 1 | 1 | **Projecto** | 43.81d | 2020-11-16 | 2021-02-01 |  | 0d |
| 2 | 1.1 | **Requerimientos de los usuarios** | 6d | 2020-11-16 | 2020-11-23 |  | 1d |
| 3 |  | Toma de requisitos de usuario | 5d | 2020-11-16 | 2020-11-20 |  | 1d |
| 4 |  | Validación de los requisitos de usuario | 1d | 2020-11-23 | 2020-11-23 | 3 | 1d |
| 5 | 1.2 | **Análisis de requisitos del Software** | 10d | 2020-11-16 | 2020-11-27 |  | 0d |
| 6 |  | Estudio de los requisitos Software | 3d | 2020-11-16 | 2020-11-18 |  | 0d |
| 7 |  | Validación de los requisitos Software | 1d | 2020-11-19 | 2020-11-19 | 6 | 0d |
| 8 |  | Instalación del Software necesario en los PCs | 4d | 2020-11-20 | 2020-11-25 | 7 | 0d |
| 9 |  | Preparación de los puestos de trabajo | 2d | 2020-11-26 | 2020-11-27 | 8 | 0d |
| 10 |  | Preparación del servidor de desarrollo | 2d | 2020-11-19 | 2020-11-20 | 6 | 5d |
| 11 |  | Preparación del servidor de preexplotación | 1d | 2020-11-19 | 2020-11-19 | 6 | 6d |
| 12 | 1.3 | **Análisis de requistos del Sistema** | 3d | 2020-11-24 | 2020-11-26 |  | 1d |
| 13 |  | Estimación de Hardware necesario | 12h | 2020-11-24 | 2020-11-25 | 4 | 1d |
| 14 |  | Validación del hardware necesario (T) | 12h | 2020-11-25 | 2020-11-26 | 13 | 1d |
| 15 |  | Validación de hardware necesario (JP) | 12h | 2020-11-25 | 2020-11-26 | 13 | 1d |
| 16 | 1.4 | **Diseño Preliminar** | 8d | 2020-11-30 | 2020-12-11 |  | 0d |
| 17 |  | Diseño de los datos y procesos | 6d | 2020-11-30 | 2020-12-09 | 2, 5, 12 | 0d |
| 18 |  | Diseño del plan de pruebas (D) | 1d | 2020-12-10 | 2020-12-10 | 17 | 36.5d |
| 19 |  | Diseño del plan de pruebas (JP) | 1d | 2020-12-11 | 2020-12-11 | 17 | 35.5d |
| 20 | 1.5 | **Diseño Detallado** | 9d | 2020-12-10 | 2020-12-22 |  | 18.81d |
| 21 |  | Diseño gráfico de la aplicación | 5d | 2020-12-10 | 2020-12-16 | 17 | 32.5d |
| 22 | 1.5.2 | **Diseño Técnico de componentes** | 9d | 2020-12-10 | 2020-12-22 |  | 18.81d |
| 23 |  | Presentación | 1d | 2020-12-10 | 2020-12-10 | 17 | 36.5d |
| 24 |  | Mantenimiento de la Explotación pesquera | 2d | 2020-12-14 | 2020-12-15 | 17 | 23.81d |
| 25 |  | Mantenimiento de Historial; Reservas, Tarifas y Eventos | 4d | 2020-12-17 | 2020-12-22 | 17 | 18.81d |
| 26 |  | Localización | 5d | 2020-12-11 | 2020-12-17 | 17 | 21.81d |
| 27 | 1.6 | **Diseño de la Base de Datos** | 6d | 2020-12-14 | 2020-12-21 |  | 16.81d |
| 28 |  | Diseño de Tablas y Relaciones | 3d | 2020-12-14 | 2020-12-16 | 17 | 17d |
| 29 |  | Validación del diseño de la BD (D) | 2d | 2020-12-18 | 2020-12-21 | 28 | 16.81d |
| 30 |  | Validación del diseño de la BD (JP) | 1d | 2020-12-17 | 2020-12-17 | 28 | 18.81d |
| 31 |  | Entrega del diseño de la aplicación | 0d | 2020-12-22 | 2020-12-22 | 16, 20, 27 | 18.81d |
| 32 | 1.8 | **Construcción** | 18.81d | 2020-12-04 | 2021-01-15 |  | 0d |
| 33 |  | Construcción del Prototipo | 3d | 2020-12-09 | 2020-12-11 | 17SS+5d | 35.5d |
| 34 |  | Construcción de la BD (D) | 3d | 2020-12-22 | 2021-01-07 | 30, 29 | 26.5d |
| 35 |  | Construcción de la BD (P) | 2d | 2020-12-22 | 2020-12-23 | 30, 29 | 27.5d |
| 36 |  | Codificación | 14.81d | 2020-12-04 | 2021-01-15 | 17FS-2d | 0d |
| 37 | 1.9 | **Pruebas** | 6d | 2021-01-15 | 2021-01-25 |  | 0d |
| 38 |  | Pruebas Unitarias | 1.5d | 2021-01-15 | 2021-01-19 | 36 | 0d |
| 39 |  | Pruebas de Integración | 1d | 2021-01-19 | 2021-01-20 | 38 | 0d |
| 40 |  | Pruebas de Sistema | 3.5d | 2021-01-20 | 2021-01-25 | 39 | 0d |
| 41 | 1.10 | **Demostración a los usuarios** | 5d | 2021-01-25 | 2021-02-01 |  | 0d |
| 42 |  | Entrenamiento de usuarios | 32h | 2021-01-25 | 2021-01-29 | 40 | 0d |
| 43 |  | Validación del producto por los usuarios (JP) | 1d | 2021-01-29 | 2021-02-01 | 42 | 0d |
| 44 |  | Validación del producto por los usuarios (A) | 1d | 2021-01-29 | 2021-02-01 | 42 | 0d |
| 45 |  | Aceptación del Producto por parte del cliente | 0d | 2021-02-01 | 2021-02-01 | 44 | 0d |
| 46 | 1.12 | **Documentación** | 20.5d | 2020-12-18 | 2021-02-01 |  | 0.5d |
| 47 |  | Documentación técnica de proyecto | 10d | 2020-12-18 | 2021-01-15 | 36FF | 11d |
| 48 |  | Documentación de usuarios | 5d | 2021-01-25 | 2021-02-01 | 39FS+3d | 0.5d |

## Version 2 (data date 2020-12-07, saved 2020-12-04, file Proyecto 3.mpp)

Note of the change: Reestructuración de Cuarto

Last finish 2021-02-01 → 2021-02-11 (+10d). Complete tasks 0 → 9.

Changed:

| ID | Task | Start | Finish | Duration | Complete | Total float | Other |
| --- | --- | --- | --- | --- | --- | --- | --- |
| 1 | **Projecto** | 2020-11-16 A | 2021-02-01 → 2021-02-11 (+10d) | 43.81d → 51.81d | 0% → 25% |  | baseline start none → 2020-11-16; baseline finish none → 2021-02-01 |
| 2 | **Requerimientos de los usuarios** | 2020-11-16 A | 2020-11-23 A |  | 0% → 100% | 1d → none | baseline start none → 2020-11-16; baseline finish none → 2020-11-23 |
| 3 | Toma de requisitos de usuario | 2020-11-16 A | 2020-11-20 A |  | 0% → 100% | 1d → none | baseline start none → 2020-11-16; baseline finish none → 2020-11-20 |
| 4 | Validación de los requisitos de usuario | 2020-11-23 A | 2020-11-23 A |  | 0% → 100% | 1d → none | baseline start none → 2020-11-23; baseline finish none → 2020-11-23 |
| 5 | **Análisis de requisitos del Software** | 2020-11-16 A | 2020-11-27 → 2020-12-14 (+17d) | 10d → 19d | 0% → 82% |  | baseline start none → 2020-11-16; baseline finish none → 2020-11-27 |
| 6 | Estudio de los requisitos Software | 2020-11-16 A | 2020-11-18 A |  | 0% → 100% | 0d → none | baseline start none → 2020-11-16; baseline finish none → 2020-11-18 |
| 7 | Validación de los requisitos Software | 2020-11-19 A | 2020-11-19 A |  | 0% → 100% | 0d → none | baseline start none → 2020-11-19; baseline finish none → 2020-11-19 |
| 8 | Instalación del Software necesario en los PCs | 2020-11-20 A | 2020-11-25 → 2020-12-10 (+15d) | 4d → 13d | 0% → 85% |  | baseline start none → 2020-11-20; baseline finish none → 2020-11-25 |
| 9 | Preparación de los puestos de trabajo | 2020-11-26 → 2020-12-11 (+15d) | 2020-11-27 → 2020-12-14 (+17d) |  |  |  | baseline start none → 2020-11-26; baseline finish none → 2020-11-27 |
| 10 | Preparación del servidor de desarrollo | 2020-11-19 A | 2020-11-20 A |  | 0% → 100% | 5d → none | baseline start none → 2020-11-19; baseline finish none → 2020-11-20 |
| 11 | Preparación del servidor de preexplotación | 2020-11-19 A | 2020-11-19 A |  | 0% → 100% | 6d → none | baseline start none → 2020-11-19; baseline finish none → 2020-11-19 |
| 12 | **Análisis de requistos del Sistema** | 2020-11-24 A | 2020-11-26 A |  | 0% → 100% | 1d → none | baseline start none → 2020-11-24; baseline finish none → 2020-11-26 |
| 13 | Estimación de Hardware necesario | 2020-11-24 A | 2020-11-25 A |  | 0% → 100% | 1d → none | baseline start none → 2020-11-24; baseline finish none → 2020-11-25 |
| 14 | Validación del hardware necesario (T) | 2020-11-25 A | 2020-11-26 A |  | 0% → 100% | 1d → none | baseline start none → 2020-11-25; baseline finish none → 2020-11-26 |
| 15 | Validación de hardware necesario (JP) | 2020-11-25 A | 2020-11-26 A |  | 0% → 100% | 1d → none | baseline start none → 2020-11-25; baseline finish none → 2020-11-26 |
| 16 | **Diseño Preliminar** | 2020-11-30 → 2020-12-15 (+15d) | 2020-12-11 → 2021-01-07 (+27d) |  |  |  | baseline start none → 2020-11-30; baseline finish none → 2020-12-11 |
| 17 | Diseño de los datos y procesos | 2020-11-30 → 2020-12-15 (+15d) | 2020-12-09 → 2020-12-22 (+13d) |  |  |  | baseline start none → 2020-11-30; baseline finish none → 2020-12-09 |
| 18 | Diseño del plan de pruebas (D) | 2020-12-10 → 2020-12-23 (+13d) | 2020-12-10 → 2020-12-23 (+13d) |  |  | 36.5d → 26.81d | baseline start none → 2020-12-10; baseline finish none → 2020-12-10 |
| 19 | Diseño del plan de pruebas (JP) | 2020-12-11 → 2021-01-07 (+27d) | 2020-12-11 → 2021-01-07 (+27d) |  |  | 35.5d → 25.81d | baseline start none → 2020-12-11; baseline finish none → 2020-12-11 |
| 20 | **Diseño Detallado** | 2020-12-10 → 2020-12-23 (+13d) | 2020-12-22 → 2021-01-18 (+27d) |  |  | 18.81d → 17.81d | baseline start none → 2020-12-10; baseline finish none → 2020-12-22 |
| 21 | Diseño gráfico de la aplicación | 2020-12-10 → 2020-12-23 (+13d) | 2020-12-16 → 2021-01-12 (+27d) |  |  | 32.5d → 22.81d | baseline start none → 2020-12-10; baseline finish none → 2020-12-16 |
| 22 | **Diseño Técnico de componentes** | 2020-12-10 → 2020-12-23 (+13d) | 2020-12-22 → 2021-01-18 (+27d) |  |  | 18.81d → 17.81d | baseline start none → 2020-12-10; baseline finish none → 2020-12-22 |
| 23 | Presentación | 2020-12-10 → 2020-12-23 (+13d) | 2020-12-10 → 2020-12-23 (+13d) |  |  | 36.5d → 26.81d | baseline start none → 2020-12-10; baseline finish none → 2020-12-10 |
| 24 | Mantenimiento de la Explotación pesquera | 2020-12-14 → 2021-01-07 (+24d) | 2020-12-15 → 2021-01-08 (+24d) |  |  | 23.81d → 24.81d | baseline start none → 2020-12-14; baseline finish none → 2020-12-15 |
| 25 | Mantenimiento de Historial; Reservas, Tarifas y Eventos | 2020-12-17 → 2021-01-13 (+27d) | 2020-12-22 → 2021-01-18 (+27d) |  |  | 18.81d → 17.81d | baseline start none → 2020-12-17; baseline finish none → 2020-12-22 |
| 26 | Localización | 2020-12-11 → 2021-01-07 (+27d) | 2020-12-17 → 2021-01-13 (+27d) |  |  | 21.81d → 20.81d | baseline start none → 2020-12-11; baseline finish none → 2020-12-17 |
| 27 | **Diseño de la Base de Datos** | 2020-12-14 → 2021-01-08 (+25d) | 2020-12-21 → 2021-01-18 (+28d) | 6d → 7d |  | 16.81d → 14.81d | baseline start none → 2020-12-14; baseline finish none → 2020-12-21 |
| 28 | Diseño de Tablas y Relaciones | 2020-12-14 → 2021-01-08 (+25d) | 2020-12-16 → 2021-01-12 (+27d) |  |  | 17d → 14.81d | baseline start none → 2020-12-14; baseline finish none → 2020-12-16 |
| 29 | Validación del diseño de la BD (D) | 2020-12-18 → 2021-01-15 (+28d) | 2020-12-21 → 2021-01-18 (+28d) |  |  | 16.81d → 14.81d | baseline start none → 2020-12-18; baseline finish none → 2020-12-21 |
| 30 | Validación del diseño de la BD (JP) | 2020-12-17 → 2021-01-13 (+27d) | 2020-12-17 → 2021-01-13 (+27d) |  |  | 18.81d → 17.81d | baseline start none → 2020-12-17; baseline finish none → 2020-12-17 |
| 31 | Entrega del diseño de la aplicación | 2020-12-22 → 2021-01-18 (+27d) | 2020-12-22 → 2021-01-18 (+27d) |  |  | 18.81d → 17.81d | baseline start none → 2020-12-22; baseline finish none → 2020-12-22 |
| 32 | **Construcción** | 2020-12-04 → 2020-12-21 (+17d) | 2021-01-15 → 2021-02-11 (+27d) | 18.81d → 28.81d |  |  | baseline start none → 2020-12-04; baseline finish none → 2021-01-15 |
| 33 | Construcción del Prototipo | 2020-12-09 → 2020-12-22 (+13d) | 2020-12-11 → 2021-02-11 (+62d) |  |  | 35.5d → 0d | baseline start none → 2020-12-09; baseline finish none → 2020-12-11 |
| 34 | Construcción de la BD (D) | 2020-12-22 → 2021-01-19 (+28d) | 2021-01-07 → 2021-01-21 (+14d) |  |  | 26.5d → 14.81d | baseline start none → 2020-12-22; baseline finish none → 2021-01-07 |
| 35 | Construcción de la BD (P) | 2020-12-22 → 2021-01-19 (+28d) | 2020-12-23 → 2021-01-20 (+28d) |  |  | 27.5d → 15.81d | baseline start none → 2020-12-22; baseline finish none → 2020-12-23 |
| 36 | Codificación | 2020-12-04 → 2020-12-21 (+17d) | 2021-01-15 → 2021-01-27 (+12d) | 14.81d → 16.62d |  |  | baseline start none → 2020-12-04; baseline finish none → 2021-01-15 |
| 37 | **Pruebas** | 2021-01-15 → 2021-01-27 (+12d) | 2021-01-25 → 2021-02-04 (+10d) |  |  |  | baseline start none → 2021-01-15; baseline finish none → 2021-01-25 |
| 38 | Pruebas Unitarias | 2021-01-15 → 2021-01-27 (+12d) | 2021-01-19 → 2021-01-29 (+10d) |  |  |  | baseline start none → 2021-01-15; baseline finish none → 2021-01-19 |
| 39 | Pruebas de Integración | 2021-01-19 → 2021-01-29 (+10d) | 2021-01-20 → 2021-02-01 (+12d) |  |  |  | baseline start none → 2021-01-19; baseline finish none → 2021-01-20 |
| 40 | Pruebas de Sistema | 2021-01-20 → 2021-02-01 (+12d) | 2021-01-25 → 2021-02-04 (+10d) |  |  |  | baseline start none → 2021-01-20; baseline finish none → 2021-01-25 |
| 41 | **Demostración a los usuarios** | 2021-01-25 → 2021-02-04 (+10d) | 2021-02-01 → 2021-02-11 (+10d) |  |  |  | baseline start none → 2021-01-25; baseline finish none → 2021-02-01 |
| 42 | Entrenamiento de usuarios | 2021-01-25 → 2021-02-04 (+10d) | 2021-01-29 → 2021-02-10 (+12d) |  |  |  | baseline start none → 2021-01-25; baseline finish none → 2021-01-29 |
| 43 | Validación del producto por los usuarios (JP) | 2021-01-29 → 2021-02-10 (+12d) | 2021-02-01 → 2021-02-11 (+10d) |  |  |  | baseline start none → 2021-01-29; baseline finish none → 2021-02-01 |
| 44 | Validación del producto por los usuarios (A) | 2021-01-29 → 2021-02-10 (+12d) | 2021-02-01 → 2021-02-11 (+10d) |  |  |  | baseline start none → 2021-01-29; baseline finish none → 2021-02-01 |
| 45 | Aceptación del Producto por parte del cliente | 2021-02-01 → 2021-02-11 (+10d) | 2021-02-01 → 2021-02-11 (+10d) |  |  |  | baseline start none → 2021-02-01; baseline finish none → 2021-02-01 |
| 46 | **Documentación** | 2020-12-18 → 2021-01-13 (+26d) | 2021-02-01 → 2021-02-11 (+10d) |  |  |  | baseline start none → 2020-12-18; baseline finish none → 2021-02-01 |
| 47 | Documentación técnica de proyecto | 2020-12-18 → 2021-01-13 (+26d) | 2021-01-15 → 2021-01-27 (+12d) |  |  |  | baseline start none → 2020-12-18; baseline finish none → 2021-01-15 |
| 48 | Documentación de usuarios | 2021-01-25 → 2021-02-04 (+10d) | 2021-02-01 → 2021-02-11 (+10d) |  |  |  | baseline start none → 2021-01-25; baseline finish none → 2021-02-01 |

## Version 3 (data date 2020-12-07, saved 2020-12-04, file Proyecto 2.mpp)

Note of the change: Reestructuración de Cuarto

Last finish 2021-02-11 → 2021-02-01 (-10d).

Added:

| ID | Task | Duration | Start | Finish | Resources |
| --- | --- | --- | --- | --- | --- |
| 49 | Formación de nuevos trabajadores | 5d | 2020-12-09 | 2020-12-15 | Programador J 2; Programador J 3 |

Changed:

| ID | Task | Start | Finish | Duration | Complete | Total float | Other |
| --- | --- | --- | --- | --- | --- | --- | --- |
| 1 | **Projecto** |  | 2021-02-11 → 2021-02-01 (-10d) | 51.81d → 43.83d | 25% → 27% |  |  |
| 24 | Mantenimiento de la Explotación pesquera | 2021-01-07 → 2021-01-08 (+1d) | 2021-01-08 → 2021-01-11 (+3d) |  |  | 24.81d → 14.83d | resources Programador J → Programador J 3 |
| 32 | **Construcción** |  | 2021-02-11 → 2021-01-21 (-21d) | 28.81d → 14d |  |  |  |
| 33 | Construcción del Prototipo |  | 2021-02-11 → 2021-01-07 (-35d) |  |  | 0d → 16.83d | resources Programador J → Programador J 3 |
| 35 | Construcción de la BD (P) |  |  |  |  | 15.81d → 7.83d | resources Programador J → Programador J 3 |
| 36 | Codificación |  | 2021-01-27 → 2021-01-18 (-9d) | 16.62d → 10.33d |  |  | resources Analista P; Programador J → Analista P; Programador J; Programador J 2 |
| 37 | **Pruebas** | 2021-01-27 → 2021-01-18 (-9d) | 2021-02-04 → 2021-01-26 (-9d) |  |  |  |  |
| 38 | Pruebas Unitarias | 2021-01-27 → 2021-01-18 (-9d) | 2021-01-29 → 2021-01-19 (-10d) |  |  |  | resources Programador J; Analista P → Programador J; Programador J 2 |
| 39 | Pruebas de Integración | 2021-01-29 → 2021-01-19 (-10d) | 2021-02-01 → 2021-01-20 (-12d) |  |  |  | resources Programador J; Analista P → Programador J; Programador J 2 |
| 40 | Pruebas de Sistema | 2021-02-01 → 2021-01-20 (-12d) | 2021-02-04 → 2021-01-26 (-9d) |  |  | 0d → 1.5d | resources Programador J; Analista P → Programador J; Programador J 2 |
| 41 | **Demostración a los usuarios** | 2021-02-04 → 2021-01-26 (-9d) | 2021-02-11 → 2021-01-29 (-13d) | 5d → 3d |  | 0d → 1.5d |  |
| 42 | Entrenamiento de usuarios | 2021-02-04 → 2021-01-26 (-9d) | 2021-02-10 → 2021-01-28 (-13d) | 32h → 16h |  | 0d → 1.5d | resources Programador J → Programador J; Analista P |
| 43 | Validación del producto por los usuarios (JP) | 2021-02-10 → 2021-01-28 (-13d) | 2021-02-11 → 2021-01-29 (-13d) |  |  | 0d → 1.5d |  |
| 44 | Validación del producto por los usuarios (A) | 2021-02-10 → 2021-01-28 (-13d) | 2021-02-11 → 2021-01-29 (-13d) |  |  | 0d → 1.5d |  |
| 45 | Aceptación del Producto por parte del cliente | 2021-02-11 → 2021-01-29 (-13d) | 2021-02-11 → 2021-01-29 (-13d) |  |  | 0d → 1.5d |  |
| 46 | **Documentación** | 2021-01-13 → 2020-12-21 (-23d) | 2021-02-11 → 2021-02-01 (-10d) |  |  | 0.5d → 0d |  |
| 47 | Documentación técnica de proyecto | 2021-01-13 → 2020-12-21 (-23d) | 2021-01-27 → 2021-01-18 (-9d) |  |  | 11d → 9.31d |  |
| 48 | Documentación de usuarios | 2021-02-04 → 2021-01-25 (-10d) | 2021-02-11 → 2021-02-01 (-10d) |  |  | 0.5d → 0d |  |
